# RTx_schedule_updated

How a schedule from MS Project changed from version to version. A marks actual dates.

## Version 1 (saved 2014-02-04)

Note of the change: Distributed FMEA tasks. Transferred Sightline API development to Robert.

| ID | WBS | Task | Duration | Start | Finish | Predecessors | Total float | Constraint |
| --- | --- | --- | --- | --- | --- | --- | --- | --- |
| 1 | 1 | **RTx Controller** | 126d | 2014-01-15 | 2014-05-20 |  | 0d |  |
| 2 | 1.1 | **RTx Controller Hardware** | 92d | 2014-01-15 | 2014-04-16 |  | 0d |  |
| 3 | 1.1.1 | **Schematic** | 51d | 2014-01-15 | 2014-03-06 |  | 0d |  |
| 4 |  | Verify processor selection | 6d | 2014-01-15 | 2014-01-20 |  |  |  |
| 5 |  | Review and document ADC filter design | 5d | 2014-01-26 | 2014-01-30 |  |  |  |
| 6 |  | Implement Ethernet port in HW | 14d | 2014-01-26 | 2014-02-08 | 4 |  |  |
| 7 |  | Implement USB port in HW | 3d | 2014-02-02 | 2014-02-04 | 4 |  |  |
| 8 |  | Determine PCB power requirements and design power supplies | 6d | 2014-02-09 | 2014-02-14 | 4, 6, 7 |  |  |
| 9 |  | Select connectors and cabling | 4d | 2014-02-15 | 2014-02-18 | 6, 7 |  |  |
| 10 |  | Finalize processor pin-out | 6d | 2014-02-17 | 2014-02-22 | 6, 7 |  |  |
| 11 |  | FMEA of RTx Controller Board/Revise Schematic | 7d | 2014-02-28 | 2014-03-06 | 4, 6, 7, 9, 10 |  |  |
| 12 | 1.1.2 | **PCB** | 49d | 2014-02-27 | 2014-04-16 | 3 | 0d |  |
| 13 | 1.1.2.1 | **Layout PCB** | 17d | 2014-02-27 | 2014-03-15 | 3 | 0d |  |
| 14 |  | General Layout | 10d | 2014-03-06 | 2014-03-15 | 3, 84, 15 |  |  |
| 15 |  | High-speed Signal Routing (including research) | 4d | 2014-02-27 | 2014-03-02 | 3 |  |  |
| 16 |  | Assemble RTx Controller PCB | 7d | 2014-04-10 | 2014-04-16 | 14, 15 |  |  |
| 17 | 1.2 | **RTx Controller Firmware** | 104d | 2014-02-06 | 2014-05-20 |  | 0d |  |
| 18 | 1.2.1 | **Develop Axis Position Control Loop** | 28d | 2014-02-06 | 2014-03-05 |  | 0d |  |
| 19 |  | Research Control Theory | 11d | 2014-02-06 | 2014-02-16 |  |  |  |
| 20 |  | Model control transfer function and derive PID coefficients | 4d | 2014-02-21 | 2014-02-24 | 19 |  |  |
| 21 |  | Develop code for PID loop | 9d | 2014-02-25 | 2014-03-05 | 20 |  |  |
| 22 | 1.2.2 | **Develop Ethernet API** | 46d | 2014-03-06 | 2014-04-20 |  | 0d |  |
| 23 |  | Research ChibiOS/RT UDP implementation | 7d | 2014-03-06 | 2014-03-12 |  |  |  |
| 24 |  | Write General Ethernet API | 21d | 2014-03-15 | 2014-04-04 | 23 |  |  |
| 25 |  | Determine required Sightline functionalities | 13d | 2014-03-15 | 2014-03-27 | 28 |  |  |
| 26 |  | Write Ethernet API Code for Sightline | 21d | 2014-03-31 | 2014-04-20 | 25 |  |  |
| 27 | 1.2.3 | **Develop tracking algorithm** | 75d | 2014-03-07 | 2014-05-20 |  | 0d |  |
| 28 |  | Research capabilities of Sightline SLA1500 | 6d | 2014-03-07 | 2014-03-12 |  |  |  |
| 29 |  | Research capabilities of available imaging devices | 7d | 2014-04-26 | 2014-05-02 | 28 |  |  |
| 30 |  | Develop tracking algorithm | 11d | 2014-04-29 | 2014-05-09 | 29 |  |  |
| 31 |  | Write tracking code | 11d | 2014-05-10 | 2014-05-20 | 30, 10 |  |  |
| 32 | 2 | **Battery Unit** | 12d | 2014-02-23 | 2014-03-06 |  | 0d |  |
| 33 |  | Determine system power requirements | 4d | 2014-02-23 | 2014-02-26 | 8 |  |  |
| 34 |  | Select batteries and battery enclosure/cabling | 4d | 2014-03-03 | 2014-03-06 | 33 |  |  |
| 35 | 3 | **Manual Control Unit** | 88d | 2014-01-31 | 2014-04-28 |  | 0d |  |
| 36 | 3.1 | **Hardware** | 43d | 2014-01-31 | 2014-03-14 |  | 0d |  |
| 37 |  | Design ADC filters for the manual inputs | 6d | 2014-01-31 | 2014-02-05 |  |  |  |
| 38 |  | Complete enclosure of manual controller | 3d | 2014-02-19 | 2014-02-21 | 37, 40 |  |  |
| 39 |  | FMEA of RTx Manual Remote Board/Revise Schematic | 2d | 2014-02-06 | 2014-02-07 | 37 |  |  |
| 40 |  | PCB Layout | 3d | 2014-02-08 | 2014-02-10 | 37, 39 |  |  |
| 41 |  | Assemble Manual Remote PCB | 2d | 2014-03-13 | 2014-03-14 | 37, 39, 40 |  |  |
| 42 | 3.2 | **Software** | 24d | 2014-04-05 | 2014-04-28 |  | 0d |  |
| 43 |  | Develop manual control algorithm | 14d | 2014-04-05 | 2014-04-18 | 37 |  |  |
| 44 |  | Write code for Manual Control | 10d | 2014-04-19 | 2014-04-28 | 43 |  |  |
| 45 | 4 | **FMEA of Mechanical Structure** | 21d | 2014-03-16 | 2014-04-05 | 3, 35, 32 | 0d |  |
| 46 |  | Determine all single points of failure and determine which ones could result in injury or permanent damage | 7d | 2014-03-16 | 2014-03-22 |  |  | start no earlier than 2014-03-25 |
| 47 |  | Determine methods of prevention/Revisions/Design | 14d | 2014-03-23 | 2014-04-05 | 46 |  | start no earlier than 2014-03-20 |
| 48 | 5 | **Design the power filter for the axis motors** | 48d | 2014-02-11 | 2014-03-30 |  | 0d |  |
| 49 |  | Power Filter Schematic | 4d | 2014-02-11 | 2014-02-14 |  |  |  |
| 50 |  | Power Filter PCB layout | 4d | 2014-02-15 | 2014-02-18 | 49 |  |  |
| 51 |  | Assemble Power Filter PCB | 3d | 2014-03-28 | 2014-03-30 | 49, 50 |  |  |
| 52 |  | Select Ethernet switch | 5d | 2014-01-21 | 2014-01-25 |  |  |  |
| 53 | 7 | **Testing** | 40d? | 2014-01-26 | 2014-03-06 | 1 |  |  |
| 54 | 7.1 | **RTx controller** | 1d | 2014-01-26 | 2014-01-26 |  |  |  |
| 55 | 7.1.1 | **Hardware** | 1d | 2014-01-26 | 2014-01-26 |  |  |  |
| 56 |  | Test development (Robert/Robin – 2 hours) | 1.5d | 2014-01-26 | 2014-01-27 |  |  |  |
| 57 |  | Test execution and debugging (Robert/Robin – 3 hours) | 2d | 2014-01-26 | 2014-01-27 | 56 |  |  |
| 58 |  | Revision (Robert /Robin– 3 hours) | 2d | 2014-01-26 | 2014-01-27 | 57 |  |  |
| 59 | 7.1.2 | **Firmware** | 1d | 2014-01-26 | 2014-01-26 |  |  |  |
| 60 |  | Test development (Rob – 32 hours) | 22d | 2014-01-26 | 2014-02-16 |  |  |  |
| 61 |  | Test execution and debugging (Rob – 32 hours) | 22d | 2014-01-26 | 2014-02-16 | 60 |  |  |
| 62 |  | Revision (Rob – 16 hours) | 11d | 2014-01-26 | 2014-02-05 | 61 |  |  |
| 63 | 7.1.3 | **Integration** | 1d | 2014-01-26 | 2014-01-26 |  |  |  |
| 64 |  | Test development (All members – 8 hours) | 6d | 2014-01-26 | 2014-01-31 |  |  |  |
| 65 |  | Test execution and debugging (All members – 6 hours) | 4d | 2014-01-26 | 2014-01-29 | 64 |  |  |
| 66 |  | Revision (All members - 6 hours) | 4d | 2014-01-26 | 2014-01-29 | 65 |  |  |
| 67 | 7.2 | **Manual controller** | 1d | 2014-01-26 | 2014-01-26 |  |  |  |
| 68 | 7.2.1 | **Hardware** | 1d | 2014-01-26 | 2014-01-26 |  |  |  |
| 69 |  | Test development (Robert/Robin – 1 hour) | 1d | 2014-01-26 | 2014-01-26 |  |  |  |
| 70 |  | Test execution and debugging (Robert/Robin – 1 hour) | 1d | 2014-01-26 | 2014-01-26 | 69 |  |  |

| ID | WBS | Task | Duration | Start | Finish | Predecessors | Total float |
| --- | --- | --- | --- | --- | --- | --- | --- |
| 71 |  | Revision (Robert/Robin – 1 hour) | 1d | 2014-01-26 | 2014-01-26 | 70 |  |
| 72 | 7.2.2 | **Firmware** | 1d | 2014-01-26 | 2014-01-26 |  |  |
| 73 |  | Test development (Rob – 8 hours) | 6d | 2014-01-26 | 2014-01-31 |  |  |
| 74 |  | Test execution and debugging (Rob – 8 hours) | 6d | 2014-01-26 | 2014-01-31 | 73 |  |
| 75 |  | Revision (Rob – 4 hours) | 3d | 2014-01-26 | 2014-01-28 | 74 |  |
| 76 | 7.2.3 | **Integration** | 1d | 2014-01-26 | 2014-01-26 |  |  |
| 77 |  | Test development (All members – 1 hour) | 1d | 2014-01-26 | 2014-01-26 |  |  |
| 78 |  | Test execution and debugging (All members – 1 hour) | 1d | 2014-01-26 | 2014-01-26 | 77 |  |
| 79 |  | Revision (All members – 1 hour) | 1d | 2014-01-26 | 2014-01-26 | 78 |  |
| 80 | 7.3 | **System integration** | 1d | 2014-01-26 | 2014-01-26 |  |  |
| 81 |  | Test development (All members – 4 hours) | 3d | 2014-01-26 | 2014-01-28 |  |  |
| 82 |  | Test execution and debugging (All members – 4 hours) | 3d | 2014-01-26 | 2014-01-28 | 81 |  |
| 83 |  | Revision (All members – 16 hours) | 11d | 2014-01-26 | 2014-02-05 | 82 |  |
| 84 | 8 | **Enclosure** | 6d | 2014-02-22 | 2014-02-27 |  | 0d |
| 85 |  | Select enclosure and determine PCB size and shape | 6d | 2014-02-22 | 2014-02-27 |  |  |
| 86 | 9 | **Project Management** | 5d | 2014-01-26 | 2014-01-30 |  | 0d |
| 87 |  | Complete project proposal documentation | 1d | 2014-01-26 | 2014-01-26 |  |  |
| 88 |  | Finish scheduling tasks up to testing | 3d | 2014-01-28 | 2014-01-30 |  |  |
| 89 |  | Write project description for Jeske | 1d | 2014-01-27 | 2014-01-27 |  |  |

## Version 2 (saved 2014-02-08)

Note of the change: Added USB section to documentation. Adjusted schedule slightly due to my delay from traveling.

Last finish stays 2014-05-20.

Changed:

| ID | Task | Start | Finish | Duration |
| --- | --- | --- | --- | --- |
| 3 | **Schematic** |  | 2014-03-06 → 2014-03-09 (+3d) | 51d → 54d |
| 7 | Implement USB port in HW | 2014-02-02 → 2014-02-06 (+4d) | 2014-02-04 → 2014-02-08 (+4d) |  |
| 11 | FMEA of RTx Controller Board/Revise Schematic | 2014-02-28 → 2014-03-03 (+3d) | 2014-03-06 → 2014-03-09 (+3d) |  |
| 13 | **Layout PCB** |  | 2014-03-15 → 2014-03-18 (+3d) | 17d → 20d |
| 14 | General Layout |  | 2014-03-15 → 2014-03-18 (+3d) | 10d → 13d |
| 38 | Complete enclosure of manual controller | 2014-02-19 → 2014-02-22 (+3d) | 2014-02-21 → 2014-02-24 (+3d) |  |
| 39 | FMEA of RTx Manual Remote Board/Revise Schematic | 2014-02-06 → 2014-02-09 (+3d) | 2014-02-07 → 2014-02-10 (+3d) |  |
| 40 | PCB Layout | 2014-02-08 → 2014-02-11 (+3d) | 2014-02-10 → 2014-02-13 (+3d) |  |
| 45 | **FMEA of Mechanical Structure** | 2014-03-16 → 2014-03-19 (+3d) | 2014-04-05 → 2014-04-08 (+3d) |  |
| 46 | Determine all single points of failure and determine which ones could result in injury or permanent damage | 2014-03-16 → 2014-03-19 (+3d) | 2014-03-22 → 2014-03-25 (+3d) |  |
| 47 | Determine methods of prevention/Revisions/Design | 2014-03-23 → 2014-03-26 (+3d) | 2014-04-05 → 2014-04-08 (+3d) |  |
| 48 | **Design the power filter for the axis motors** | 2014-02-11 → 2014-02-14 (+3d) |  | 48d → 45d |
| 49 | Power Filter Schematic | 2014-02-11 → 2014-02-14 (+3d) | 2014-02-14 → 2014-02-17 (+3d) |  |
| 50 | Power Filter PCB layout | 2014-02-15 → 2014-02-18 (+3d) | 2014-02-18 → 2014-02-21 (+3d) |  |
| 84 | **Enclosure** | 2014-02-22 → 2014-02-25 (+3d) | 2014-02-27 → 2014-03-02 (+3d) |  |
| 85 | Select enclosure and determine PCB size and shape | 2014-02-22 → 2014-02-25 (+3d) | 2014-02-27 → 2014-03-02 (+3d) |  |

## Version 3 (saved 2014-02-13)

Note of the change: Updated Robert's schedule.

Last finish stays 2014-05-20.

Changed:

| ID | Task | Start | Finish | Duration |
| --- | --- | --- | --- | --- |
| 8 | Determine PCB power requirements and design power supplies | 2014-02-09 → 2014-02-13 (+4d) | 2014-02-14 → 2014-02-18 (+4d) |  |
| 9 | Select connectors and cabling | 2014-02-15 → 2014-02-23 (+8d) | 2014-02-18 → 2014-02-26 (+8d) |  |
| 12 | **PCB** | 2014-02-27 → 2014-03-03 (+4d) |  | 49d → 45d |
| 13 | **Layout PCB** | 2014-02-27 → 2014-03-03 (+4d) |  | 20d → 16d |
| 15 | High-speed Signal Routing (including research) | 2014-02-27 → 2014-03-03 (+4d) | 2014-03-02 → 2014-03-06 (+4d) |  |
| 22 | **Develop Ethernet API** |  | 2014-04-20 → 2014-04-24 (+4d) | 46d → 50d |
| 25 | Determine required Sightline functionalities | 2014-03-15 → 2014-03-19 (+4d) | 2014-03-27 → 2014-03-31 (+4d) |  |
| 26 | Write Ethernet API Code for Sightline | 2014-03-31 → 2014-04-04 (+4d) | 2014-04-20 → 2014-04-24 (+4d) |  |
| 27 | **Develop tracking algorithm** | 2014-03-07 → 2014-03-11 (+4d) |  | 75d → 71d |
| 28 | Research capabilities of Sightline SLA1500 | 2014-03-07 → 2014-03-11 (+4d) | 2014-03-12 → 2014-03-16 (+4d) |  |
| 32 | **Battery Unit** | 2014-02-23 → 2014-02-27 (+4d) | 2014-03-06 → 2014-03-10 (+4d) |  |
| 33 | Determine system power requirements | 2014-02-23 → 2014-02-27 (+4d) | 2014-02-26 → 2014-03-02 (+4d) |  |
| 34 | Select batteries and battery enclosure/cabling | 2014-03-03 → 2014-03-07 (+4d) | 2014-03-06 → 2014-03-10 (+4d) |  |
| 36 | **Hardware** |  | 2014-03-14 → 2014-03-18 (+4d) | 43d → 47d |
| 41 | Assemble Manual Remote PCB | 2014-03-13 → 2014-03-17 (+4d) | 2014-03-14 → 2014-03-18 (+4d) |  |
| 48 | **Design the power filter for the axis motors** |  | 2014-03-30 → 2014-04-03 (+4d) | 45d → 49d |
| 51 | Assemble Power Filter PCB | 2014-03-28 → 2014-04-01 (+4d) | 2014-03-30 → 2014-04-03 (+4d) |  |

## Version 4 (saved 2014-02-18)

Note of the change: adjusted schedule to account for unexpected midterms this week. changed drill size on vias for manual controller board.

Last finish stays 2014-05-20.

Changed:

| ID | Task | Start | Finish | Duration |
| --- | --- | --- | --- | --- |
| 2 | **RTx Controller Hardware** |  | 2014-04-16 → 2014-04-18 (+2d) | 92d → 94d |
| 3 | **Schematic** |  | 2014-03-09 → 2014-03-12 (+3d) | 54d → 57d |
| 11 | FMEA of RTx Controller Board/Revise Schematic | 2014-03-03 → 2014-03-06 (+3d) | 2014-03-09 → 2014-03-12 (+3d) |  |
| 12 | **PCB** |  | 2014-04-16 → 2014-04-18 (+2d) | 45d → 47d |
| 13 | **Layout PCB** |  | 2014-03-18 → 2014-03-21 (+3d) | 16d → 19d |
| 14 | General Layout |  | 2014-03-18 → 2014-03-21 (+3d) | 13d → 16d |
| 16 | Assemble RTx Controller PCB | 2014-04-10 → 2014-04-12 (+2d) | 2014-04-16 → 2014-04-18 (+2d) |  |
| 38 | Complete enclosure of manual controller | 2014-02-22 → 2014-02-25 (+3d) | 2014-02-24 → 2014-02-27 (+3d) |  |
| 45 | **FMEA of Mechanical Structure** | 2014-03-19 → 2014-03-22 (+3d) | 2014-04-08 → 2014-04-11 (+3d) |  |
| 46 | Determine all single points of failure and determine which ones could result in injury or permanent damage | 2014-03-19 → 2014-03-22 (+3d) | 2014-03-25 → 2014-03-28 (+3d) |  |
| 47 | Determine methods of prevention/Revisions/Design | 2014-03-26 → 2014-03-29 (+3d) | 2014-04-08 → 2014-04-11 (+3d) |  |
| 48 | **Design the power filter for the axis motors** | 2014-02-14 → 2014-02-17 (+3d) |  | 49d → 46d |
| 49 | Power Filter Schematic | 2014-02-14 → 2014-02-17 (+3d) | 2014-02-17 → 2014-02-20 (+3d) |  |
| 50 | Power Filter PCB layout | 2014-02-18 → 2014-02-21 (+3d) | 2014-02-21 → 2014-02-24 (+3d) |  |
| 84 | **Enclosure** | 2014-02-25 → 2014-02-28 (+3d) | 2014-03-02 → 2014-03-05 (+3d) |  |
| 85 | Select enclosure and determine PCB size and shape | 2014-02-25 → 2014-02-28 (+3d) | 2014-03-02 → 2014-03-05 (+3d) |  |

## Version 5 (saved 2014-02-20)

Note of the change: updated project schedule

Last finish stays 2014-05-20.

Changed:

| ID | Task | Start | Finish | Duration |
| --- | --- | --- | --- | --- |
| 12 | **PCB** | 2014-03-03 → 2014-03-13 (+10d) |  | 47d → 37d |
| 13 | **Layout PCB** | 2014-03-03 → 2014-03-13 (+10d) | 2014-03-21 → 2014-03-25 (+4d) | 19d → 13d |
| 14 | General Layout | 2014-03-06 → 2014-03-13 (+7d) | 2014-03-21 → 2014-03-25 (+4d) | 16d → 13d |
| 15 | High-speed Signal Routing (including research) | 2014-03-03 → 2014-03-13 (+10d) | 2014-03-06 → 2014-03-16 (+10d) |  |
| 24 | Write General Ethernet API | 2014-03-15 → 2014-03-13 (-2d) | 2014-04-04 → 2014-04-02 (-2d) |  |
| 27 | **Develop tracking algorithm** | 2014-03-11 → 2014-03-07 (-4d) |  | 71d → 75d |
| 28 | Research capabilities of Sightline SLA1500 | 2014-03-11 → 2014-03-07 (-4d) | 2014-03-16 → 2014-03-12 (-4d) |  |
| 32 | **Battery Unit** |  | 2014-03-10 → 2014-03-06 (-4d) | 12d → 8d |
| 34 | Select batteries and battery enclosure/cabling | 2014-03-07 → 2014-03-03 (-4d) | 2014-03-10 → 2014-03-06 (-4d) |  |

## Version 6 (saved 2014-02-27)

Note of the change: Updated schedule to reflect changes in battery subsystem.

Last finish stays 2014-05-20. Complete tasks 0 → 15.

Changed:

| ID | Task | Start | Finish | Duration | Complete | Total float | Other |
| --- | --- | --- | --- | --- | --- | --- | --- |
| 1 | **RTx Controller** | 2014-01-15 A |  |  | 0% → 28% |  |  |
| 2 | **RTx Controller Hardware** | 2014-01-15 A |  |  | 0% → 52% |  |  |
| 3 | **Schematic** | 2014-01-15 A | 2014-03-12 → 2014-03-09 (-3d) | 57d → 54d | 0% → 75% |  |  |
| 4 | Verify processor selection | 2014-01-15 A | 2014-01-20 A |  | 0% → 100% |  |  |
| 5 | Review and document ADC filter design | 2014-01-26 A | 2014-01-30 A |  | 0% → 100% |  |  |
| 6 | Implement Ethernet port in HW | 2014-01-26 A | 2014-02-08 A |  | 0% → 100% |  |  |
| 7 | Implement USB port in HW | 2014-02-06 A | 2014-02-08 A |  | 0% → 100% |  |  |
| 8 | Determine PCB power requirements and design power supplies | 2014-02-13 A |  |  | 0% → 75% |  |  |
| 10 | Finalize processor pin-out | 2014-02-17 A | 2014-02-22 A |  | 0% → 100% |  |  |
| 11 | FMEA of RTx Controller Board/Revise Schematic | 2014-03-06 → 2014-03-03 (-3d) | 2014-03-12 → 2014-03-09 (-3d) |  |  |  |  |
| 12 | **PCB** | 2014-03-13 → 2014-03-10 (-3d) |  | 37d → 40d |  |  |  |
| 13 | **Layout PCB** | 2014-03-13 → 2014-03-10 (-3d) | 2014-03-25 → 2014-03-21 (-4d) | 13d → 12d |  |  |  |
| 14 | General Layout of RTx Controller PCB | 2014-03-13 → 2014-03-10 (-3d) | 2014-03-25 → 2014-03-21 (-4d) | 13d → 12d |  |  | was named General Layout |
| 17 | **RTx Controller Firmware** | 2014-02-06 A |  |  | 0% → 13% |  |  |
| 18 | **Develop Axis Position Control Loop** | 2014-02-06 A |  |  | 0% → 68% |  |  |
| 19 | Research Control Theory | 2014-02-06 A | 2014-02-16 A |  | 0% → 100% |  |  |
| 20 | Model control transfer function and derive PID coefficients | 2014-02-21 A |  |  | 0% → 75% |  |  |
| 21 | Develop code for PID loop | 2014-02-25 A |  |  | 0% → 25% |  |  |
| 24 | Write General Ethernet API |  |  |  |  |  | resources Rob → Rob [50%] |
| 34 | Design battery switch/precharge and cabling |  |  |  |  |  | was named Select batteries and battery enclosure/cabling |
| 35 | **Manual Control Unit** | 2014-01-31 A |  |  | 0% → 28% |  |  |
| 36 | **Hardware** | 2014-01-31 A | 2014-03-18 → 2014-03-21 (+3d) | 47d → 50d | 0% → 69% |  |  |
| 37 | Design ADC filters for the manual inputs | 2014-01-31 A | 2014-02-05 A |  | 0% → 100% |  |  |
| 38 | Complete enclosure of manual controller | 2014-02-25 → 2014-03-19 (+22d) | 2014-02-27 → 2014-03-21 (+22d) |  |  |  |  |
| 39 | FMEA of RTx Manual Remote Board/Revise Schematic | 2014-02-09 A | 2014-02-10 A |  | 0% → 100% |  |  |
| 40 | PCB Layout | 2014-02-11 A | 2014-02-13 A |  | 0% → 100% |  |  |
| 48 | **Design the power filter for the axis motors** | 2014-02-17 A |  |  | 0% → 73% |  |  |
| 49 | Power Filter Schematic | 2014-02-17 A | 2014-02-20 A |  | 0% → 100% |  |  |
| 50 | Power Filter PCB layout | 2014-02-21 A | 2014-02-24 A |  | 0% → 100% |  |  |
| 52 | Select Ethernet switch | 2014-01-21 A | 2014-01-25 A |  | 0% → 100% |  |  |
| 84 | **Enclosure** | 2014-02-28 → 2014-02-25 (-3d) | 2014-03-05 → 2014-03-02 (-3d) |  |  |  |  |
| 85 | Select enclosure and determine PCB size and shape | 2014-02-28 → 2014-02-25 (-3d) | 2014-03-05 → 2014-03-02 (-3d) |  |  |  |  |
| 86 | **Project Management** | 2014-01-26 A | 2014-01-30 A |  | 0% → 100% | 0d → none |  |
| 87 | Complete project proposal documentation | 2014-01-26 A | 2014-01-26 A |  | 0% → 100% |  |  |
| 88 | Finish scheduling tasks up to testing | 2014-01-28 A | 2014-01-30 A |  | 0% → 100% |  |  |
| 89 | Write project description for Jeske | 2014-01-27 A | 2014-01-27 A |  | 0% → 100% |  |  |

## Version 7 (saved 2014-04-06)

Note of the change: Updated schedule.

Last finish 2014-05-20 → 2014-05-24 (+4d). Complete tasks 15 → 20.

Changed:

| ID | Task | Start | Finish | Duration | Complete | Total float | Other |
| --- | --- | --- | --- | --- | --- | --- | --- |
| 1 | **RTx Controller** |  | 2014-05-20 → 2014-05-24 (+4d) | 126d → 130d | 28% → 54% |  |  |
| 2 | **RTx Controller Hardware** |  | 2014-04-18 → 2014-05-16 (+28d) | 94d → 122d | 52% → 72% |  |  |
| 3 | **Schematic** |  | 2014-03-09 → 2014-04-08 (+30d) | 54d → 84d | 75% → 89% |  |  |
| 8 | Determine PCB power requirements and design power supplies |  | 2014-02-18 A |  | 75% → 100% |  |  |
| 9 | Select connectors and cabling | 2014-02-23 → 2014-04-05 (+41d) | 2014-02-26 → 2014-04-08 (+41d) |  |  |  | resources Robert → Rob |
| 11 | FMEA of RTx Controller Board/Revise Schematic | 2014-03-03 A |  |  | 0% → 75% |  |  |
| 12 | **PCB** | 2014-03-10 A | 2014-04-18 → 2014-05-16 (+28d) | 40d → 68d | 0% → 39% |  |  |
| 13 | **Layout PCB** | 2014-03-10 A | 2014-03-21 → 2014-04-10 (+20d) | 12d → 31.25d | 0% → 53% |  |  |
| 14 | General Layout of RTx Controller PCB | 2014-03-10 A | 2014-03-21 → 2014-04-10 (+20d) | 12d → 14.25d | 0% → 68% |  |  |
| 15 | High-speed Signal Routing (including research) | 2014-03-13 → 2014-04-04 (+22d) | 2014-03-16 → 2014-04-07 (+22d) |  |  |  |  |
| 16 | Assemble RTx Controller PCB | 2014-04-12 → 2014-05-10 (+28d) | 2014-04-18 → 2014-05-16 (+28d) |  |  |  |  |
| 17 | **RTx Controller Firmware** |  | 2014-05-20 → 2014-05-24 (+4d) | 104d → 108d | 13% → 42% |  |  |
| 18 | **Develop Axis Position Control Loop** |  | 2014-03-05 → 2014-04-14 (+40d) | 28d → 67.75d | 68% → 73% |  |  |
| 20 | Model control transfer function and derive PID coefficients |  | 2014-02-24 → 2014-04-07 (+42d) |  | 75% → 50% |  |  |
| 21 | Develop code for PID loop |  | 2014-03-05 → 2014-04-14 (+40d) |  | 25% → 50% |  |  |
| 22 | **Develop Ethernet API** | 2014-03-06 A | 2014-04-24 → 2014-05-02 (+8d) | 50d → 57.25d | 0% → 47% |  |  |
| 23 | Research ChibiOS/RT UDP implementation | 2014-03-06 A | 2014-03-12 A |  | 0% → 100% |  |  |
| 24 | Write General Ethernet API | 2014-03-13 A | 2014-04-02 → 2014-05-02 (+30d) |  | 0% → 75% |  |  |
| 25 | Determine required Sightline functionalities | 2014-03-19 A |  |  | 0% → 50% |  |  |
| 26 | Write Ethernet API Code for Sightline | 2014-04-04 → 2014-04-08 (+4d) | 2014-04-24 → 2014-04-28 (+4d) |  |  |  |  |
| 27 | **Develop tracking algorithm** | 2014-03-07 A | 2014-05-20 → 2014-05-24 (+4d) | 75d → 79d | 0% → 13% |  |  |
| 28 | Research capabilities of Sightline SLA1500 | 2014-03-07 A |  |  | 0% → 75% |  |  |
| 29 | Research capabilities of available imaging devices | 2014-04-26 → 2014-05-03 (+7d) | 2014-05-02 → 2014-05-09 (+7d) |  |  |  |  |
| 30 | Develop tracking algorithm | 2014-04-29 → 2014-05-03 (+4d) | 2014-05-09 → 2014-05-13 (+4d) |  |  |  |  |
| 31 | Write tracking code | 2014-05-10 → 2014-05-14 (+4d) | 2014-05-20 → 2014-05-24 (+4d) |  |  |  |  |
| 32 | **Battery Unit** | 2014-02-27 A | 2014-03-06 A |  | 0% → 100% | 0d → none |  |
| 33 | Determine system power requirements | 2014-02-27 A | 2014-03-02 A |  | 0% → 100% |  |  |
| 34 | Design battery switch/precharge and cabling | 2014-03-03 A | 2014-03-06 A |  | 0% → 100% |  |  |
| 35 | **Manual Control Unit** |  | 2014-04-28 → 2014-05-02 (+4d) | 88d → 92d |  |  |  |
| 36 | **Hardware** |  | 2014-03-21 → 2014-05-02 (+42d) | 50d → 92d |  |  |  |
| 38 | Complete enclosure of manual controller | 2014-03-19 → 2014-04-30 (+42d) | 2014-03-21 → 2014-05-02 (+42d) |  |  |  |  |
| 41 | Assemble Manual Remote PCB | 2014-03-17 → 2014-04-29 (+43d) | 2014-03-18 → 2014-04-30 (+43d) |  |  |  |  |
| 42 | **Software** | 2014-04-05 → 2014-04-09 (+4d) | 2014-04-28 → 2014-05-02 (+4d) |  |  |  |  |
| 43 | Develop manual control algorithm | 2014-04-05 → 2014-04-09 (+4d) | 2014-04-18 → 2014-04-22 (+4d) |  |  |  |  |
| 44 | Write code for Manual Control | 2014-04-19 → 2014-04-23 (+4d) | 2014-04-28 → 2014-05-02 (+4d) |  |  |  |  |
| 45 | **FMEA of Mechanical Structure** | 2014-03-22 → 2014-04-09 (+18d) | 2014-04-11 → 2014-04-29 (+18d) |  |  |  |  |
| 46 | Determine all single points of failure and determine which ones could result in injury or permanent damage | 2014-03-22 → 2014-04-09 (+18d) | 2014-03-28 → 2014-04-15 (+18d) |  |  |  |  |
| 47 | Determine methods of prevention/Revisions/Design | 2014-03-29 → 2014-04-16 (+18d) | 2014-04-11 → 2014-04-29 (+18d) |  |  |  |  |
| 48 | **Design the power filter for the axis motors** |  | 2014-04-03 → 2014-05-03 (+30d) | 46d → 76d |  |  |  |
| 51 | Assemble Power Filter PCB | 2014-04-01 → 2014-05-01 (+30d) | 2014-04-03 → 2014-05-03 (+30d) |  |  |  |  |
| 84 | **Enclosure** | 2014-02-25 A | 2014-03-02 A |  | 0% → 100% | 0d → none |  |
| 85 | Select enclosure and determine PCB size and shape | 2014-02-25 A | 2014-03-02 A |  | 0% → 100% |  |  |

## Version 8 (saved 2014-04-07)

Note of the change: Updated WPR document and schedule.

Last finish stays 2014-05-24. Complete tasks 20 → 21.

Changed:

| ID | Task | Start | Finish | Duration | Complete |
| --- | --- | --- | --- | --- | --- |
| 1 | **RTx Controller** |  |  |  | 54% → 56% |
| 17 | **RTx Controller Firmware** |  |  |  | 42% → 46% |
| 18 | **Develop Axis Position Control Loop** |  |  |  | 73% → 91% |
| 20 | Model control transfer function and derive PID coefficients |  | 2014-04-07 A |  | 50% → 100% |
| 21 | Develop code for PID loop |  |  |  | 50% → 75% |
| 22 | **Develop Ethernet API** |  | 2014-05-02 → 2014-05-05 (+3d) | 57.25d → 60.5d |  |
| 25 | Determine required Sightline functionalities |  | 2014-03-31 → 2014-04-14 (+14d) |  |  |
| 26 | Write Ethernet API Code for Sightline | 2014-04-08 → 2014-04-14 (+6d) | 2014-04-28 → 2014-05-05 (+7d) |  |  |
| 41 | Assemble Manual Remote PCB | 2014-04-29 → 2014-04-28 (-1d) | 2014-04-30 → 2014-04-29 (-1d) |  |  |
| 48 | **Design the power filter for the axis motors** |  | 2014-05-03 → 2014-05-02 (-1d) | 76d → 75d |  |
| 51 | Assemble Power Filter PCB | 2014-05-01 → 2014-04-30 (-1d) | 2014-05-03 → 2014-05-02 (-1d) |  |  |

## Version 9 (saved 2014-04-11)

Note of the change: Updated WPR and schedule. Updated system block diagram. Completed firmware GPIO details.

Last finish stays 2014-05-24. Complete tasks 21 → 23.

Added:

| ID | Task | Duration | Start | Finish |
| --- | --- | --- | --- | --- |
| 90 | <New Task> | 1d? | 2014-01-26 | 2014-01-26 |
| 91 | <New Task> | 1d? | 2014-01-26 | 2014-01-26 |
| 92 | <New Task> | 1d? | 2014-01-26 | 2014-01-26 |

Changed:

| ID | Task | Start | Finish | Duration | Complete | Total float |
| --- | --- | --- | --- | --- | --- | --- |
| 1 | **RTx Controller** |  |  |  | 56% → 60% |  |
| 2 | **RTx Controller Hardware** |  | 2014-05-16 → 2014-05-18 (+2d) | 122d → 123.75d | 72% → 77% |  |
| 3 | **Schematic** |  | 2014-04-08 → 2014-05-04 (+26d) | 84d → 109.75d | 89% → 93% |  |
| 9 | Select connectors and cabling | 2014-04-05 A |  |  | 0% → 50% |  |
| 11 | FMEA of RTx Controller Board/Revise Schematic |  | 2014-03-09 → 2014-05-04 (+56d) |  |  |  |
| 12 | **PCB** |  | 2014-05-16 → 2014-05-18 (+2d) | 68d → 69.75d | 39% → 47% |  |
| 13 | **Layout PCB** |  |  |  | 53% → 64% |  |
| 15 | High-speed Signal Routing (including research) | 2014-04-04 A |  |  | 0% → 50% |  |
| 16 | Assemble RTx Controller PCB | 2014-05-10 → 2014-05-11 (+1d) | 2014-05-16 → 2014-05-18 (+2d) |  |  |  |
| 17 | **RTx Controller Firmware** |  |  |  | 46% → 49% |  |
| 18 | **Develop Axis Position Control Loop** |  | 2014-04-14 A |  | 91% → 100% | 0d → none |
| 21 | Develop code for PID loop |  | 2014-04-14 A |  | 75% → 100% |  |
| 22 | **Develop Ethernet API** |  | 2014-05-05 → 2014-05-11 (+6d) | 60.5d → 67d |  |  |
| 26 | Write Ethernet API Code for Sightline | 2014-04-14 → 2014-04-21 (+7d) | 2014-05-05 → 2014-05-11 (+6d) |  |  |  |
| 27 | **Develop tracking algorithm** |  |  |  | 13% → 17% |  |
| 28 | Research capabilities of Sightline SLA1500 |  | 2014-03-12 A |  | 75% → 100% |  |
| 29 | Research capabilities of available imaging devices | 2014-05-03 → 2014-05-04 (+1d) | 2014-05-09 → 2014-05-11 (+2d) |  |  |  |

## Version 10 (saved 2014-04-19)

Note of the change: Layout ready for silkscreen cleanup. Updated schedule.

Last finish 2014-05-24 → 2014-05-28 (+4d). Complete tasks 23 → 25.

Removed: 29 Research capabilities of available imaging devices

Changed:

| ID | Task | Start | Finish | Duration | Complete | Predecessors | Other |
| --- | --- | --- | --- | --- | --- | --- | --- |
| 1 | **RTx Controller** |  | 2014-05-24 → 2014-05-28 (+4d) | 130d → 133.75d | 60% → 69% |  |  |
| 2 | **RTx Controller Hardware** |  | 2014-05-18 → 2014-05-28 (+10d) | 123.75d → 133.75d | 77% → 80% |  |  |
| 3 | **Schematic** |  | 2014-05-04 → 2014-05-28 (+24d) | 109.75d → 133.75d |  |  |  |
| 11 | FMEA of RTx Controller Board/Revise Schematic |  | 2014-05-04 → 2014-05-28 (+24d) |  |  |  |  |
| 12 | **PCB** |  | 2014-05-18 → 2014-05-25 (+7d) | 69.75d → 76.25d | 47% → 55% |  |  |
| 13 | **Layout PCB** |  | 2014-04-10 → 2014-04-20 (+10d) | 31.25d → 41.25d | 64% → 76% |  |  |
| 14 | General Layout of RTx Controller PCB |  | 2014-04-10 → 2014-04-20 (+10d) | 14.25d → 14d | 68% → 70% |  |  |
| 15 | High-speed Signal Routing (including research) |  | 2014-04-07 A |  | 50% → 100% |  |  |
| 16 | Assemble RTx Controller PCB | 2014-05-11 → 2014-05-18 (+7d) | 2014-05-18 → 2014-05-25 (+7d) |  |  |  |  |
| 17 | **RTx Controller Firmware** |  |  |  | 49% → 62% |  |  |
| 22 | **Develop Ethernet API** |  | 2014-05-11 → 2014-05-16 (+5d) | 67d → 72d | 47% → 66% |  |  |
| 24 | Write General Ethernet API |  | 2014-05-02 → 2014-05-16 (+14d) |  |  |  |  |
| 25 | Determine required Sightline functionalities |  | 2014-04-14 A |  | 50% → 100% |  |  |
| 26 | Write Ethernet API Code for Sightline | 2014-04-21 → 2014-04-23 A (+2d) | 2014-05-11 → 2014-05-16 (+5d) |  | 0% → 25% |  |  |
| 27 | **Develop tracking algorithm** |  |  |  | 17% → 21% |  |  |
| 29 | Develop tracking algorithm |  |  |  |  | Research capabilities of available imaging devices → none |  |
| 35 | **Hardware** |  | 2014-05-02 → 2014-05-01 (-1d) | 92d → 90.25d |  |  |  |
| 37 | Complete enclosure of manual controller | 2014-04-30 → 2014-04-28 (-2d) | 2014-05-02 → 2014-05-01 (-1d) |  |  |  | resources Robin → Robert |
| 40 | Assemble Manual Remote PCB | 2014-04-28 → 2014-04-18 (-10d) | 2014-04-29 → 2014-04-19 (-10d) |  |  |  |  |
| 44 | **FMEA of Mechanical Structure** | 2014-04-09 → 2014-04-20 (+11d) | 2014-04-29 → 2014-05-18 (+19d) | 21d → 28d |  |  |  |
| 45 | Determine all single points of failure and determine which ones could result in injury or permanent damage | 2014-04-09 → 2014-04-20 (+11d) | 2014-04-15 → 2014-05-04 (+19d) | 7d → 14d |  |  |  |
| 46 | Determine methods of prevention/Revisions/Design | 2014-04-16 → 2014-05-04 (+18d) | 2014-04-29 → 2014-05-18 (+19d) |  |  |  |  |
| 47 | **Design the power filter for the axis motors** |  | 2014-05-02 → 2014-04-22 (-10d) | 75d → 65d |  |  |  |
| 50 | Assemble Power Filter PCB | 2014-04-30 → 2014-04-20 (-10d) | 2014-05-02 → 2014-04-22 (-10d) |  |  |  |  |

## Version 11 (saved 2014-04-20)

Note of the change: Added TP to Pin 6 of POE Controller.

Last finish stays 2014-05-28.

Changed:

| ID | Task | Finish |
| --- | --- | --- |
| 9 | Select connectors and cabling | 2014-04-08 → 2014-05-26 (+48d) |

## Version 12 (saved 2014-05-02)

Note of the change: Updated project schedule.

Last finish 2014-05-28 → 2014-05-30 (+2d). Complete tasks 25 → 29.

Changed:

| ID | Task | Start | Finish | Duration | Complete | Total float | Other |
| --- | --- | --- | --- | --- | --- | --- | --- |
| 1 | **RTx Controller** |  | 2014-05-28 → 2014-05-26 (-2d) | 133.75d → 132d | 69% → 76% |  |  |
| 2 | **RTx Controller Hardware** |  | 2014-05-28 → 2014-05-26 (-2d) | 133.75d → 132d | 80% → 88% |  |  |
| 3 | **Schematic** |  | 2014-05-28 → 2014-05-26 (-2d) | 133.75d → 132d | 93% → 97% |  |  |
| 9 | Select connectors and cabling |  | 2014-05-26 A |  | 50% → 100% |  |  |
| 11 | FMEA of RTx Controller Board/Revise Schematic |  | 2014-05-28 → 2014-05-20 (-8d) |  |  |  |  |
| 12 | **PCB** |  | 2014-05-25 → 2014-05-18 (-7d) | 76.25d → 70d | 55% → 72% |  |  |
| 13 | **Layout PCB** |  | 2014-04-20 A |  | 76% → 100% | 0d → none |  |
| 14 | General Layout of RTx Controller PCB |  | 2014-04-20 A |  | 70% → 100% |  |  |
| 16 | Assemble RTx Controller PCB | 2014-05-18 → 2014-05-12 (-6d) | 2014-05-25 → 2014-05-18 (-7d) |  |  |  |  |
| 17 | **RTx Controller Firmware** |  |  |  | 62% → 68% |  |  |
| 22 | **Develop Ethernet API** |  |  | 72d → 71.25d | 66% → 77% |  |  |
| 26 | Write Ethernet API Code for Sightline |  | 2014-05-16 → 2014-05-07 (-9d) | 21d → 12d | 25% → 44% |  |  |
| 34 | **Manual Control Unit** |  |  |  | 28% → 60% |  |  |
| 35 | **Hardware** |  |  |  | 69% → 91% |  |  |
| 37 | Complete enclosure of manual controller | 2014-04-28 A |  |  | 0% → 50% |  |  |
| 40 | Assemble Manual Remote PCB | 2014-04-18 A | 2014-04-19 A |  | 0% → 100% |  |  |
| 41 | **Software** | 2014-04-09 A |  |  | 0% → 40% |  |  |
| 42 | Develop manual control algorithm | 2014-04-09 A |  |  | 0% → 50% |  |  |
| 43 | Write code for Manual Control | 2014-04-23 A |  |  | 0% → 25% |  |  |
| 44 | **FMEA of Mechanical Structure** | 2014-04-20 A |  |  | 0% → 17% |  |  |
| 45 | Determine all single points of failure and determine which ones could result in injury or permanent damage | 2014-04-20 A |  |  | 0% → 34% |  |  |
| 47 | **Design the power filter for the axis motors** |  | 2014-04-22 A |  | 73% → 100% | 0d → none |  |
| 50 | Assemble Power Filter PCB | 2014-04-20 A | 2014-04-22 A |  | 0% → 100% |  |  |
| 55 | Test development | 2014-01-26 → 2014-05-09 (+103d) | 2014-01-27 → 2014-05-13 (+106d) | 1.5d → 5d |  |  | was named Test development (Robert/Robin – 2 hours); resources none → Robert |
| 56 | Test execution and debugging | 2014-01-26 → 2014-05-17 (+111d) | 2014-01-27 → 2014-05-19 (+112d) | 2d → 3d |  |  | was named Test execution and debugging (Robert/Robin – 3 hours); resources none → Robert |
| 57 | Board Modification | 2014-01-26 → 2014-05-20 (+114d) | 2014-01-27 → 2014-05-22 (+115d) | 2d → 3d |  |  | was named Revision (Robert /Robin– 3 hours); resources none → Robert |
| 59 | Test development | 2014-01-26 → 2014-05-27 (+121d) | 2014-02-16 → 2014-05-30 (+103d) | 22d → 4d |  |  | was named Test development (Rob – 32 hours); resources none → Rob |

## Version 13 (saved 2014-05-17)

Note of the change: Completed documentation for Capstone.

Last finish 2014-05-30 → 2014-06-02 (+3d). Complete tasks 29 → 34.

Added:

| ID | Task | Duration | Start | Finish | Resources |
| --- | --- | --- | --- | --- | --- |
| 89 | Produce Poster | 3d | 2014-05-31 | 2014-06-02 | Robin |

Removed: 89 <New Task>; 90 <New Task>; 91 <New Task>

Changed:

| ID | Task | Start | Finish | Duration | Complete | Total float | Other |
| --- | --- | --- | --- | --- | --- | --- | --- |
| 1 | **RTx Controller** |  | 2014-05-26 → 2014-05-30 (+4d) | 132d → 135.75d | 76% → 81% |  |  |
| 2 | **RTx Controller Hardware** |  | 2014-05-26 → 2014-05-30 (+4d) | 132d → 135.75d |  |  |  |
| 3 | **Schematic** |  | 2014-05-26 → 2014-05-30 (+4d) | 132d → 135.75d |  |  |  |
| 11 | FMEA of RTx Controller Board/Revise Schematic |  | 2014-05-20 → 2014-05-30 (+10d) |  |  |  |  |
| 17 | **RTx Controller Firmware** |  |  |  | 68% → 75% |  |  |
| 22 | **Develop Ethernet API** |  | 2014-05-16 → 2014-05-20 (+4d) | 71.25d → 75.25d | 77% → 92% |  |  |
| 24 | Write General Ethernet API |  | 2014-05-16 A |  | 75% → 100% |  |  |
| 26 | Write Ethernet API Code for Sightline |  | 2014-05-07 → 2014-05-20 (+13d) |  | 44% → 67% |  | resources Robert → Robert; Rob |
| 34 | **Manual Control Unit** |  | 2014-05-02 → 2014-05-17 (+15d) | 92d → 106.5d | 60% → 96% |  |  |
| 35 | **Hardware** |  | 2014-05-01 → 2014-05-17 (+16d) | 90.25d → 106.5d |  |  |  |
| 37 | Complete enclosure of manual controller |  | 2014-05-01 → 2014-05-17 (+16d) |  |  |  |  |
| 41 | **Software** |  | 2014-05-02 A |  | 40% → 100% | 0d → none |  |
| 42 | Develop manual control algorithm |  | 2014-04-22 A |  | 50% → 100% |  |  |
| 43 | Write code for Manual Control |  | 2014-05-02 A |  | 25% → 100% |  |  |
| 44 | **FMEA of Mechanical Structure** |  |  |  | 17% → 71% |  |  |
| 45 | Determine all single points of failure and determine which ones could result in injury or permanent damage |  | 2014-05-04 A |  | 34% → 100% |  |  |
| 46 | Determine methods of prevention/Revisions/Design | 2014-05-04 A |  |  | 0% → 41% |  |  |
| 52 | **Testing** | 2014-01-26 A |  |  | 0% → 7% |  |  |
| 53 | **RTx controller** | 2014-01-26 A |  |  | 0% → 10% |  |  |
| 54 | **Hardware** |  |  |  | 0% → 41% |  |  |
| 55 | Test development | 2014-05-09 A | 2014-05-13 → 2014-05-15 A (+2d) | 5d → 7d | 0% → 100% |  |  |
| 56 | Test execution and debugging |  | 2014-05-19 → 2014-05-24 (+5d) | 3d → 7d |  |  |  |
| 57 | Board Modification | 2014-05-20 → 2014-05-25 (+5d) | 2014-05-22 → 2014-05-27 (+5d) |  |  |  |  |
| 85 | **Project Management** |  | 2014-01-30 A → 2014-06-02 (+123d) | 5d → 128d | 100% → 63% | none → 0d |  |
